# Despliegue de Info Cliente

How a schedule from MS Project changed from version to version. A marks actual dates.

## Version 1 (saved 2014-08-20)

| ID | WBS | Task | Duration | Start | Finish | Predecessors | Complete | Total float | Constraint |
| --- | --- | --- | --- | --- | --- | --- | --- | --- | --- |
| 1 |  | Analisis e Investigación | 3d | 2014-07-14 A | 2014-07-16 A |  | 100% |  | must start on 2014-07-14 |
| 2 | 2 | **Acceso** | 6d | 2014-07-17 A | 2014-07-24 | 1 | 71% | 0d |  |
| 3 |  | Login | 2d | 2014-07-17 A | 2014-07-18 A | 1 | 100% |  |  |
| 4 |  | Registro | 2d | 2014-07-21 A | 2014-07-22 A | 3 | 100% |  |  |
| 5 |  | Validaciones | 3d | 2014-07-22 A | 2014-07-24 | 4 | 33% | -1d |  |
| 6 | 3 | **Landing Page** | 8d | 2014-07-24 A | 2014-08-04 | 2 | 81% |  |  |
| 7 |  | Bienvenida y menú principal | 1d | 2014-07-24 A | 2014-07-24 A | 5 | 100% |  |  |
| 8 |  | Timeline | 3d | 2014-07-24 A | 2014-07-28 | 7 | 75% | 0.5d |  |
| 9 |  | Menu datos - Perfil | 1d | 2014-07-29 A | 2014-07-29 | 8 | 50% | 4d |  |
| 10 |  | Encuesta de contacto | 2d | 2014-07-30 A | 2014-07-31 A | 9 | 100% |  |  |
| 11 |  | Menu contactenos | 1d | 2014-08-01 A | 2014-08-01 | 10 | 75% | 1d |  |
| 12 | 4 | **Graficos** | 11d | 2014-08-04 A | 2014-08-18 | 6 | 38% | 0.75d |  |
| 13 |  | Total tráfico | 2d | 2014-08-04 A | 2014-08-05 | 6 | 50% | 0d |  |
| 14 |  | Titular/Adicional | 2d | 2014-08-06 | 2014-08-07 | 13 |  | 0d |  |
| 15 | 4.3 | **Histórico por mes** | 1d | 2014-08-08 A | 2014-08-08 | 14 | 75% | 4.75d |  |
| 16 |  | Detalle total | 1d | 2014-08-08 A | 2014-08-08 A | 14 | 100% |  |  |
| 17 |  | Por categoria | 1d | 2014-08-08 A | 2014-08-08 | 14 | 50% | 4.75d |  |
| 18 |  | Pie por categoria | 2d | 2014-08-11 | 2014-08-12 | 17 |  | 4.75d |  |
| 19 |  | Pie detalle | 2d | 2014-08-13 A | 2014-08-14 A | 18 | 100% |  |  |
| 20 |  | Historico comparativo | 2d | 2014-08-15 | 2014-08-18 | 19 |  | 0.75d |  |
| 21 |  | Evolución de mis gastos | 1d | 2014-08-19 A | 2014-08-19 | 12 | 75% | 15d |  |
| 22 | 6 | **Sub Categorias** | 3d | 2014-08-20 A | 2014-08-22 | 15 | 58% | 2d |  |
| 23 |  | Pie Sub-secciones | 1d | 2014-08-20 A | 2014-08-20 A | 21 | 100% |  |  |
| 24 |  | Estadistica y detalle Sub-secciones | 2d | 2014-08-21 A | 2014-08-22 | 23 | 38% | 2d |  |
| 25 | 7 | **Condiciones Generales** | 12d | 2014-08-25 A | 2014-09-09 | 22 | 50% | 0d |  |
| 26 |  | Integrar Google Analitycs | 2d | 2014-08-25 | 2014-08-26 | 24 |  | 2.5d |  |
| 27 |  | Exportar datos dif. Formatos | 3d | 2014-08-27 A | 2014-08-29 | 26 | 83% | 5d |  |
| 28 |  | Template dinámico | 4d | 2014-09-04 A | 2014-09-09 | 27 | 50% | 0d | finish no earlier than 2014-09-09 |

## Version 2 (saved 2014-08-20)

Last finish stays 2014-09-09.

Changed:

| ID | Task | Finish | Complete | Total float |
| --- | --- | --- | --- | --- |
| 4 | Registro | 2014-07-22 A → 2014-07-22 | 100% → 75% | none → 0.5d |
| 5 | Validaciones |  | 33% → 50% |  |
| 6 | **Landing Page** |  | 81% → 91% |  |
| 8 | Timeline | 2014-07-28 A | 75% → 100% | 0.5d → none |

## Version 3 (saved 2014-08-21)

Last finish stays 2014-09-09. Complete tasks 8 → 11.

Changed:

| ID | Task | Finish | Complete | Total float |
| --- | --- | --- | --- | --- |
| 2 | **Acceso** | 2014-07-24 A | 71% → 100% | 0d → none |
| 4 | Registro | 2014-07-22 A | 75% → 100% | 0.5d → none |
| 5 | Validaciones | 2014-07-24 A | 50% → 100% | -1d → none |
| 6 | **Landing Page** |  | 91% → 97% |  |
| 9 | Menu datos - Perfil | 2014-07-29 A | 50% → 100% | 4d → none |

## Version 4 (saved 2014-08-22)

Last finish stays 2014-09-09. Complete tasks 11 → 12.

Changed:

| ID | Task | Start | Finish | Duration | Complete | Total float |
| --- | --- | --- | --- | --- | --- | --- |
| 6 | **Landing Page** |  | 2014-08-04 → 2014-08-01 A (-3d) | 8d → 7d | 97% → 100% |  |
| 11 | Menu contactenos |  | 2014-08-01 A |  | 75% → 100% | 1d → none |
| 25 | **Condiciones Generales** |  |  |  | 50% → 47% |  |
| 26 | Integrar Google Analitycs | 2014-08-25 A |  |  | 0% → 50% | 2.5d → 2.25d |
| 27 | Exportar datos dif. Formatos |  |  |  | 83% → 75% | 5d → 4d |
| 28 | Template dinámico |  |  |  | 50% → 25% |  |

## Version 5 (saved 2014-08-25)

Note of the change: 3.0.0 - 10/Septiembre/2014 Versión Completa Previa aprobación cliente.

Last finish stays 2014-09-09. Complete tasks 12 → 15.

Changed:

| ID | Task | Start | Finish | Complete | Total float |
| --- | --- | --- | --- | --- | --- |
| 12 | **Graficos** |  |  | 38% → 50% | 0.75d → 16d |
| 20 | Historico comparativo | 2014-08-15 A |  | 0% → 75% | 0.75d → 16d |
| 21 | Evolución de mis gastos |  | 2014-08-19 A | 75% → 100% | 15d → none |
| 22 | **Sub Categorias** |  |  | 58% → 50% | 0d → 12d |
| 23 | Pie Sub-secciones |  | 2014-08-20 A → 2014-08-20 | 100% → 75% | none → 0.75d |
| 25 | **Condiciones Generales** |  | 2014-09-09 A | 47% → 100% | 0d → none |
| 26 | Integrar Google Analitycs |  | 2014-08-26 A | 50% → 100% | 2.25d → none |
| 27 | Exportar datos dif. Formatos |  | 2014-08-29 A | 75% → 100% | 4d → none |
| 28 | Template dinámico |  | 2014-09-09 A | 25% → 100% | 0d → none |

## Version 6 (saved 2014-08-26)

Last finish stays 2014-09-09. Complete tasks 15 → 17.

Changed:

| ID | Task | Finish | Complete | Total float |
| --- | --- | --- | --- | --- |
| 22 | **Sub Categorias** | 2014-08-22 A | 50% → 100% | 12d → none |
| 23 | Pie Sub-secciones | 2014-08-20 A | 75% → 100% | 0.75d → none |
| 24 | Estadistica y detalle Sub-secciones | 2014-08-22 A | 38% → 100% | 12d → none |

## Version 7 (saved 2014-08-29)

Last finish stays 2014-09-09. Complete tasks 17 → 18.

Changed:

| ID | Task | Finish | Complete | Total float |
| --- | --- | --- | --- | --- |
| 12 | **Graficos** |  | 50% → 54% |  |
| 20 | Historico comparativo | 2014-08-18 A | 75% → 100% | 16d → none |

## Version 8 (saved 2014-09-02)

Note of the change: 03 sep

Last finish stays 2014-09-09. Complete tasks 18 → 20.

Changed:

| ID | Task | Start | Finish | Complete | Total float |
| --- | --- | --- | --- | --- | --- |
| 12 | **Graficos** |  |  | 54% → 79% |  |
| 13 | Total tráfico |  |  | 50% → 75% | 0d → 23d |
| 15 | **Histórico por mes** |  | 2014-08-08 A | 75% → 100% | 20d → none |
| 17 | Por categoria |  | 2014-08-08 A | 50% → 100% | 20d → none |
| 18 | Pie por categoria | 2014-08-11 A | 2014-08-12 A | 0% → 100% | 20d → none |
